# ProjectKeybandV0.2

Schedule from MS Project, 2016-09-12 to 2017-05-26, costs in €, A marks actual dates.

## Calendars

- Estándar: Mon-Fri 09:00-13:00, 15:00-19:00; Sat-Sun off.
- Calendario Keyband: Mon-Fri 09:00-13:00, 15:00-19:00; Sat-Sun 09:00-15:00, 17:00-19:00.

## Resources

| Resource | Rate |
| --- | --- |
| Samuel | 10 |
| Sergio | 10 |
| Fernando | 10 |
| Alberto | 10 |
| Juan | 10 |
| Pablo | 10 |

## Schedule

| ID | WBS | Task | Duration | Start | Finish | Predecessors | Complete | Baseline start | Baseline finish | Baseline duration | Constraint | Resources | Work | Actual work | Cost | Baseline cost | Actual cost |
| --- | --- | --- | --- | --- | --- | --- | --- | --- | --- | --- | --- | --- | --- | --- | --- | --- | --- |
| 2 | 1 | **HITO 0: Documentos Especificación** | 27d | 2016-09-12 A | 2016-10-19 A |  | 100% | 2016-09-12 | 2016-10-19 | 27d |  |  | 1032h | 1032h | 10,320 | 10,320 | 10,320 |
| 3 | 1.1 | **Iteración 1** | 7d | 2016-09-12 A | 2016-09-20 A |  | 100% | 2016-09-12 | 2016-09-20 | 7d |  |  | 384h | 384h | 3,840 | 3,840 | 3,840 |
| 4 | 1.1.1 | **[PM] Rellenar documento concepto** | 7d | 2016-09-12 A | 2016-09-20 A |  | 100% | 2016-09-12 | 2016-09-20 | 7d |  |  | 384h | 384h | 3,840 | 3,840 | 3,840 |
| 5 | 1.1.1.1 | Crear Lean Canvas | 3d | 2016-09-12 A | 2016-09-14 A |  | 100% | 2016-09-12 | 2016-09-14 | 3d | start no earlier than 2016-09-12 | Alberto; Juan; Fernando; Pablo; Sergio; Samuel | 144h | 144h | 1,440 | 1,440 | 1,440 |
| 6 | 1.1.1.2 | Rellenar documento Lean Canvas | 5d | 2016-09-16 A | 2016-09-20 A | 5 | 100% | 2016-09-16 | 2016-09-20 | 5d | finish no earlier than 2016-09-20 | Fernando; Juan; Pablo; Samuel; Sergio; Alberto | 240h | 240h | 2,400 | 2,400 | 2,400 |
| 7 | 1.2 | **Iteración 2** | 8d | 2016-09-21 A | 2016-10-01 A | 3 | 100% | 2016-09-21 | 2016-10-01 | 8d |  |  | 504h | 504h | 5,040 | 5,040 | 5,040 |
| 8 | 1.2.1 | **[PM] Rellenar versión inicial especificación** | 8d | 2016-09-21 A | 2016-10-01 A |  | 100% | 2016-09-21 | 2016-10-01 | 8d |  |  | 400h | 400h | 4,000 | 4,000 | 4,000 |
| 9 | 1.2.1.1 | Desarrollar primera versión documento especificación | 6d | 2016-09-26 A | 2016-10-01 A | 11 | 100% | 2016-09-26 | 2016-10-01 | 6d |  | Alberto; Fernando; Juan; Pablo; Samuel; Sergio | 288h | 288h | 2,880 | 2,880 | 2,880 |
| 10 | 1.2.1.2 | Especificar requisitos | 3d | 2016-09-21 A | 2016-09-23 A |  | 100% | 2016-09-21 | 2016-09-23 | 3d |  | Pablo; Samuel | 48h | 48h | 480 | 480 | 480 |
| 11 | 1.2.1.3 | Diseñar Mockups | 2d | 2016-09-24 A | 2016-09-25 A | 10 | 100% | 2016-09-24 | 2016-09-25 | 2d |  | Alberto; Fernando; Juan; Sergio | 64h | 64h | 640 | 640 | 640 |
| 12 | 1.2.2 | **[PM] Elaborar Presupuesto** | 3d | 2016-09-21 A | 2016-09-23 A |  | 100% | 2016-09-21 | 2016-09-23 | 3d |  |  | 72h | 72h | 720 | 720 | 720 |
| 13 | 1.2.2.1 | Estimar presupuesto por asignatura | 3d | 2016-09-21 A | 2016-09-23 A |  | 100% | 2016-09-21 | 2016-09-23 | 3d |  | Alberto; Fernando; Sergio | 72h | 72h | 720 | 720 | 720 |
| 14 | 1.2.3 | **[SMBI] Diseñar arquitectura técnica** | 3d | 2016-09-21 A | 2016-09-24 A |  | 100% | 2016-09-21 | 2016-09-24 | 3d |  |  | 32h | 32h | 320 | 320 | 320 |
| 15 | 1.2.3.1 | Especificar cliente | 1d | 2016-09-21 A | 2016-09-21 A |  | 100% | 2016-09-21 | 2016-09-21 | 1d |  | Juan | 8h | 8h | 80 | 80 | 80 |
| 16 | 1.2.3.2 | Especificar servidor | 1d | 2016-09-22 A | 2016-09-22 A | 15 | 100% | 2016-09-22 | 2016-09-22 | 1d |  | Juan | 8h | 8h | 80 | 80 | 80 |
| 17 | 1.2.3.3 | Especificar base de datos | 1d | 2016-09-23 A | 2016-09-23 A | 16 | 100% | 2016-09-23 | 2016-09-23 | 1d |  | Juan | 8h | 8h | 80 | 80 | 80 |
| 18 | 1.2.3.4 | Especificar relaciones | 1d | 2016-09-24 A | 2016-09-24 A | 17 | 100% | 2016-09-24 | 2016-09-24 | 1d |  | Samuel | 8h | 8h | 80 | 80 | 80 |
| 19 | 1.2.4 | **[SMBI] Especificar seguridad y autenticidad** | 2d | 2016-09-21 A | 2016-09-22 A |  | 100% | 2016-09-21 | 2016-09-22 | 2d |  |  |  |  |  |  |  |
| 20 | 1.2.4.1 | Especificar seguridad | 1d | 2016-09-21 A | 2016-09-21 A |  | 100% | 2016-09-21 | 2016-09-21 | 1d |  |  |  |  |  |  |  |
| 21 | 1.2.4.2 | Especificar autenticidad | 1d | 2016-09-22 A | 2016-09-22 A | 20 | 100% | 2016-09-22 | 2016-09-22 | 1d |  |  |  |  |  |  |  |
| 22 | 1.2.5 | **[SMBI] Especificar API** | 8d | 2016-09-21 A | 2016-09-30 A |  | 100% | 2016-09-21 | 2016-09-30 | 8d |  |  |  |  |  |  |  |
| 23 | 1.2.5.1 | Especificar llamadas a la base de datos | 2d | 2016-09-29 A | 2016-09-30 A | 24 | 100% | 2016-09-29 | 2016-09-30 | 2d |  |  |  |  |  |  |  |
| 24 | 1.2.5.2 | Crear Base de Datos | 6d | 2016-09-21 A | 2016-09-28 A |  | 100% | 2016-09-21 | 2016-09-28 | 6d |  |  |  |  |  |  |  |
| 25 | 1.3 | **Iteración 3** | 6d | 2016-10-02 A | 2016-10-10 A | 7 | 100% | 2016-10-02 | 2016-10-10 | 6d |  |  | 144h | 144h | 1,440 | 1,440 | 1,440 |
| 26 | 1.3.1 | **[PM] Completar documento especificación** | 4d | 2016-10-02 A | 2016-10-06 A |  | 100% | 2016-10-02 | 2016-10-06 | 4d |  |  | 136h | 136h | 1,360 | 1,360 | 1,360 |
| 27 | 1.3.1.1 | Corregir errores | 3d | 2016-10-02 A | 2016-10-04 A |  | 100% | 2016-10-02 | 2016-10-04 | 3d |  | Pablo; Samuel; Sergio; Juan | 96h | 96h | 960 | 960 | 960 |
| 28 | 1.3.1.2 | Añadir diagramas | 2d | 2016-10-05 A | 2016-10-06 A | 27 | 100% | 2016-10-05 | 2016-10-06 | 2d |  | Alberto; Fernando | 32h | 32h | 320 | 320 | 320 |
| 29 | 1.3.1.3 | Finalizar presupuesto | 1d | 2016-10-02 A | 2016-10-02 A |  | 100% | 2016-10-02 | 2016-10-02 | 1d |  | Fernando | 8h | 8h | 80 | 80 | 80 |
| 30 | 1.3.2 | [PM] Crear WBS Project | 1d | 2016-10-10 A | 2016-10-10 A |  | 100% | 2016-10-10 | 2016-10-10 | 1d | finish no earlier than 2016-10-10 | Fernando | 8h | 8h | 80 | 80 | 80 |

Notes:
- 2: Documentos de la especificación del sistema, lean canvas, especificación de la API, modelo de datos, seguridad y tecnologías a utilizar.
- 11: Diseño de la primera versión de los Mockups

| ID | WBS | Task | Type | Duration | Start | Finish | Predecessors | Complete | Remaining | Actual start | Baseline start | Baseline finish | Baseline duration | Constraint | Resources | Work | Actual work | Cost | Baseline cost | Actual cost |
| --- | --- | --- | --- | --- | --- | --- | --- | --- | --- | --- | --- | --- | --- | --- | --- | --- | --- | --- | --- | --- |
| 32 | 1.4 | **HITO 0** |  | 20d | 2016-09-21 A | 2016-10-19 A |  | 100% |  |  | 2016-09-21 | 2016-10-19 | 20d |  |  |  |  |  |  |  |
| 33 | 1.4.1 | Iteración 1 | milestone | 0d | 2016-09-21 A | 2016-09-21 A |  | 100% |  |  | 2016-09-21 | 2016-09-21 | 0d | start no earlier than 2016-09-21 |  |  |  |  |  |  |
| 34 | 1.4.2 | Iteración 2 | milestone | 0d | 2016-10-05 A | 2016-10-05 A |  | 100% |  |  | 2016-10-05 | 2016-10-05 | 0d | start no earlier than 2016-10-05 |  |  |  |  |  |  |
| 35 | 1.4.3 | Iteración 3 | milestone | 0d | 2016-10-19 A | 2016-10-19 A |  | 100% |  |  | 2016-10-19 | 2016-10-19 | 0d | start no earlier than 2016-10-19 |  |  |  |  |  |  |
| 37 | 2 | **HITO 1: Prototipo de aplicación** |  | 47d | 2016-10-19 | 2016-12-23 | 2 | 95% | 2.43d | 2016-10-20 | 2016-10-19 | 2016-12-23 | 47d |  |  | 1632h | 1516h | 16,320 | 16,560 | 15,160 |
| 38 | 2.1 | **Iteración 1** |  | 10d | 2016-10-20 A | 2016-11-02 A |  | 100% |  |  | 2016-10-20 | 2016-11-02 | 10d |  |  | 328h | 328h | 3,280 | 3,280 | 3,280 |
| 39 | 2.1.1 | [PM] Crear subtareas Project NOV. |  | 1d | 2016-10-20 A | 2016-10-20 A |  | 100% |  |  | 2016-10-20 | 2016-10-20 | 1d | start no earlier than 2016-10-20 | Fernando; Sergio | 8h | 8h | 80 | 80 | 80 |
| 40 | 2.1.2 | [PM] Asignar recursos Project NOV. |  | 1d | 2016-10-21 A | 2016-10-21 A | 39 | 100% |  |  | 2016-10-21 | 2016-10-21 | 1d |  | Fernando | 8h | 8h | 80 | 80 | 80 |
| 41 | 2.1.3 | [PM] Gestionar versiones GitHub |  | 5d | 2016-10-25 A | 2016-10-29 A |  | 100% |  |  | 2016-10-25 | 2016-10-29 | 5d | start no earlier than 2016-10-25 | Juan | 40h | 40h | 400 | 400 | 400 |
| 42 | 2.1.4 | [TAG] Crear visualizador por programa |  | 3d | 2016-10-27 A | 2016-10-29 A |  | 100% |  |  | 2016-10-27 | 2016-10-29 | 3d | start no earlier than 2016-10-27 | Sergio | 24h | 24h | 240 | 240 | 240 |
| 43 | 2.1.5 | **[SMBI] Configurar Backend y Seguridad** |  | 1d | 2016-10-22 A | 2016-10-24 A |  | 100% |  |  | 2016-10-22 | 2016-10-24 | 1d |  |  | 24h | 24h | 240 | 240 | 240 |
| 44 | 2.1.5.1 | Implementar Token |  | 3d | 2016-10-22 A | 2016-10-24 A | 40 | 100% |  |  | 2016-10-22 | 2016-10-24 | 3d | start no earlier than 2016-10-21 | Fernando | 24h | 24h | 240 | 240 | 240 |
| 45 | 2.1.6 | **[SMBI] Implementar API** |  | 7d | 2016-10-21 A | 2016-10-31 A |  | 100% |  |  | 2016-10-21 | 2016-10-31 | 7d |  |  | 136h | 136h | 1,360 | 1,360 | 1,360 |
| 46 | 2.1.6.1 | Crear esqueleto API |  | 3d | 2016-10-21 A | 2016-10-23 A |  | 100% |  |  | 2016-10-21 | 2016-10-23 | 3d | start no earlier than 2016-10-21 | Sergio | 24h | 24h | 240 | 240 | 240 |
| 47 | 2.1.6.2 | Crear CRUD genérico |  | 4d | 2016-10-25 A | 2016-10-28 A |  | 100% |  |  | 2016-10-25 | 2016-10-28 | 4d | start no earlier than 2016-10-25 | Samuel | 32h | 32h | 320 | 320 | 320 |
| 48 | 2.1.6.3 | Filtrar URLs |  | 1d | 2016-10-24 A | 2016-10-24 A | 46 | 100% |  |  | 2016-10-24 | 2016-10-24 | 1d |  | Sergio | 8h | 8h | 80 | 80 | 80 |
| 49 | 2.1.6.4 | Definir códigos de error |  | 1d | 2016-10-29 A | 2016-10-29 A | 47 | 100% |  |  | 2016-10-29 | 2016-10-29 | 1d |  | Samuel | 8h | 8h | 80 | 80 | 80 |
| 50 | 2.1.6.5 | Realizar métodos CRUD de las tablas |  | 2d | 2016-10-30 A | 2016-10-31 A | 49 | 100% |  |  | 2016-10-30 | 2016-10-31 | 2d |  | Juan; Alberto; Fernando; Samuel | 64h | 64h | 640 | 640 | 640 |
| 51 | 2.1.7 | **[SDM] Integrar APIs RRSS** |  | 4d | 2016-10-20 A | 2016-10-25 A |  | 100% |  |  | 2016-10-20 | 2016-10-25 | 4d |  |  | 48h | 48h | 480 | 480 | 480 |
| 52 | 2.1.7.1 | Integrar Facebook |  | 3d | 2016-10-20 A | 2016-10-22 A |  | 100% |  |  | 2016-10-20 | 2016-10-22 | 3d |  | Pablo | 24h | 24h | 240 | 240 | 240 |
| 53 | 2.1.7.2 | Integrar Twitter |  | 3d | 2016-10-23 A | 2016-10-25 A | 52 | 100% |  |  | 2016-10-23 | 2016-10-25 | 3d |  | Pablo | 24h | 24h | 240 | 240 | 240 |
| 54 | 2.1.8 | [SDM] Generar facturas PDF |  | 2d | 2016-11-01 A | 2016-11-02 A |  | 100% |  |  | 2016-11-01 | 2016-11-02 | 2d | start no earlier than 2016-11-01 | Sergio | 16h | 16h | 160 | 160 | 160 |
| 55 | 2.1.9 | **[PM] Corregir documento especificacíón requisitos** |  | 3d | 2016-10-31 A | 2016-11-02 A |  | 100% |  |  | 2016-10-31 | 2016-11-02 | 3d |  |  | 24h | 24h | 240 | 240 | 240 |
| 56 | 2.1.9.1 | Corregir documento |  | 2d | 2016-10-31 A | 2016-11-01 A |  | 100% |  |  | 2016-10-31 | 2016-11-01 | 2d | start no earlier than 2016-10-31 | Pablo | 16h | 16h | 160 | 160 | 160 |
| 57 | 2.1.9.2 | Corregir mockups |  | 1d | 2016-11-02 A | 2016-11-02 A | 56 | 100% |  |  | 2016-11-02 | 2016-11-02 | 1d |  | Pablo | 8h | 8h | 80 | 80 | 80 |

Notes:
- 37: Backend de la aplicación completa, en este prototipo se podrá comprobar todas las funcionalidades relacionadas con el servidor de nuestro sistema / (Durante la especificación de las iteraciones de noviembre 1 y 2, se dejarán a continuación las asignaturas con las tareas que queden por especificar de las siguientes iteraciones correspondientes al Hito 1)

| ID | WBS | Task | Duration | Start | Finish | Predecessors | Complete | Remaining | Baseline start | Baseline finish | Baseline duration | Total slack | Constraint | Calendar | Resources | Work | Actual work | Cost | Baseline cost | Actual cost |
| --- | --- | --- | --- | --- | --- | --- | --- | --- | --- | --- | --- | --- | --- | --- | --- | --- | --- | --- | --- | --- |
| 58 | 2.2 | **Iteración 2** | 10d | 2016-11-03 A | 2016-11-16 A | 38 | 100% |  | 2016-11-03 | 2016-11-16 | 10d |  |  |  |  | 480h | 480h | 4,800 | 4,800 | 4,800 |
| 59 | 2.2.1 | **[PM] Rellenar documento Gestión de riesgos** | 2d | 2016-11-03 A | 2016-11-05 A |  | 100% |  | 2016-11-03 | 2016-11-05 | 2d |  |  |  |  | 48h | 48h | 480 | 480 | 480 |
| 60 | 2.2.1.1 | Finalizar documento de Gestión de riesgos | 2d | 2016-11-03 A | 2016-11-04 A |  | 100% |  | 2016-11-03 | 2016-11-04 | 2d |  |  | Calendario Keyband | Fernando; Sergio | 32h | 32h | 320 | 320 | 320 |
| 61 | 2.2.1.2 | Revisar documento | 1d | 2016-11-05 A | 2016-11-05 A | 60 | 100% |  | 2016-11-05 | 2016-11-05 | 1d |  |  |  | Fernando; Sergio | 16h | 16h | 160 | 160 | 160 |
| 62 | 2.2.2 | [PM] Confeccionar informe iteración | 1d | 2016-11-06 A | 2016-11-06 A | 61 | 100% |  | 2016-11-06 | 2016-11-06 | 1d |  |  |  | Fernando | 8h | 8h | 80 | 80 | 80 |
| 63 | 2.2.3 | [TAG] Crear parser objetos | 3d | 2016-11-06 A | 2016-11-08 A | 61 | 100% |  | 2016-11-06 | 2016-11-08 | 3d |  |  |  | Sergio | 24h | 24h | 240 | 240 | 240 |
| 64 | 2.2.4 | [SDM] Desarrollar sistema facturas | 5d | 2016-11-03 A | 2016-11-07 A |  | 100% |  | 2016-11-03 | 2016-11-07 | 3d |  |  |  | Alberto | 40h | 40h | 400 | 400 | 400 |
| 65 | 2.2.5 | [SDM] Desarrollar sistema imágenes | 4d | 2016-11-08 A | 2016-11-11 A | 64 | 100% |  | 2016-11-08 | 2016-11-11 | 4d |  |  |  | Alberto | 32h | 32h | 320 | 320 | 320 |
| 66 | 2.2.6 | **[SMBI] Implementar API** | 5d | 2016-11-08 A | 2016-11-14 A |  | 100% |  | 2016-11-08 | 2016-11-14 | 5d |  |  |  |  | 232h | 232h | 2,320 | 2,320 | 2,320 |
| 67 | 2.2.6.1 | Realizar llamadas avanzadas | 3d | 2016-11-08 A | 2016-11-10 A | 64 | 100% |  | 2016-11-08 | 2016-11-10 | 3d |  |  |  | Fernando; Juan; Samuel | 72h | 72h | 720 | 720 | 720 |
| 68 | 2.2.6.2 | Implementar códigos de error | 2d | 2016-11-09 A | 2016-11-10 A | 63 | 100% |  | 2016-11-09 | 2016-11-10 | 2d |  |  |  | Sergio | 16h | 16h | 160 | 160 | 160 |
| 69 | 2.2.6.3 | Corregir errores | 3d | 2016-11-12 A | 2016-11-14 A | 65 | 100% |  | 2016-11-12 | 2016-11-14 | 3d |  |  |  | Alberto; Fernando; Juan; Pablo; Samuel; Sergio | 144h | 144h | 1,440 | 1,440 | 1,440 |
| 70 | 2.2.7 | [SMBI] Realizar informes | 2d | 2016-11-15 A | 2016-11-16 A | 69 | 100% |  | 2016-11-15 | 2016-11-16 | 2d |  |  |  | Alberto; Fernando; Juan; Pablo; Samuel; Sergio | 96h | 96h | 960 | 960 | 960 |
| 71 | 2.3 | **Iteración 3** | 10d | 2016-11-17 A | 2016-11-30 | 58 | 82% | 1.79d | 2016-11-17 | 2016-11-30 | 10d | 17d |  |  |  | 312h | 228h | 3,120 | 3,120 | 2,280 |
| 72 | 2.3.1 | [PM] Registrar tiempos Project | 1d | 2016-11-19 A | 2016-11-19 A | 74 | 100% |  | 2016-11-19 | 2016-11-19 | 1d |  |  |  | Alberto; Sergio | 16h | 16h | 160 | 160 | 160 |
| 73 | 2.3.2 | [PM] Crear subtareas Project DIC. | 1d | 2016-11-17 A | 2016-11-17 A |  | 100% |  | 2016-11-17 | 2016-11-17 | 1d |  |  |  | Pablo; Sergio | 16h | 16h | 160 | 160 | 160 |
| 74 | 2.3.3 | [PM] Asignar recursos Project DIC. | 1d | 2016-11-18 A | 2016-11-18 A | 73 | 100% |  | 2016-11-18 | 2016-11-18 | 1d |  |  |  | Samuel; Sergio | 16h | 16h | 160 | 160 | 160 |
| 75 | 2.3.4 | [PM] Comparar planificación con la real | 1d | 2016-11-20 A | 2016-11-20 A | 72 | 100% |  | 2016-11-20 | 2016-11-20 | 1d |  |  |  | Pablo; Samuel | 16h | 16h | 160 | 160 | 160 |
| 76 | 2.3.5 | [PM] Confeccionar informe iteración | 1d | 2016-11-20 A | 2016-11-20 A | 72 | 100% |  | 2016-11-20 | 2016-11-20 | 1d |  |  |  | Fernando | 8h | 8h | 80 | 80 | 80 |
| 77 | 2.3.6 | [SMBI] Realizar informes | 1d | 2016-11-21 A | 2016-11-21 A | 76 | 100% |  | 2016-11-21 | 2016-11-21 | 1d |  |  |  | Alberto; Fernando; Juan; Pablo; Samuel; Sergio | 48h | 48h | 480 | 480 | 480 |
| 78 | 2.3.7 | [SMA] Crear diagramas flujo | 2d | 2016-11-27 A | 2016-11-28 A | 85 | 100% |  | 2016-11-27 | 2016-11-28 | 2d |  | start no earlier than 2016-11-16 |  | Pablo | 16h | 16h | 160 | 160 | 160 |
| 79 | 2.3.8 | **[SMBI] Configurar Backend y Seguridad** | 3d | 2016-11-22 A | 2016-11-24 |  | 58% | 1.25d | 2016-11-22 | 2016-11-24 | 3d | 21d |  |  |  | 144h | 60h | 1,440 | 1,440 | 600 |
| 80 | 2.3.8.1 | Crear sistema de Logs | 3d | 2016-11-22 A | 2016-11-24 | 77 | 50% | 1.5d | 2016-11-22 | 2016-11-24 | 3d | 4d |  |  | Sergio | 24h | 12h | 240 | 240 | 120 |
| 81 | 2.3.8.2 | Crear sistema de monitorización | 3d | 2016-11-22 A | 2016-11-24 A | 77 | 100% |  | 2016-11-22 | 2016-11-24 | 3d |  |  |  | Pablo | 24h | 24h | 240 | 240 | 240 |
| 82 | 2.3.8.3 | Crear permisos | 3d | 2016-11-22 A | 2016-11-24 | 77 | 25% | 2.25d | 2016-11-22 | 2016-11-24 | 3d | 21d |  |  | Alberto; Fernando; Juan; Samuel | 96h | 24h | 960 | 960 | 240 |

| ID | WBS | Task | Duration | Start | Finish | Predecessors | Complete | Remaining | Baseline start | Baseline finish | Baseline duration | Total slack | Constraint | Resources | Work | Actual work | Cost | Baseline cost | Actual cost |
| --- | --- | --- | --- | --- | --- | --- | --- | --- | --- | --- | --- | --- | --- | --- | --- | --- | --- | --- | --- |
| 83 | 2.3.9 | **[PD] Realizar animación logo** | 2d | 2016-11-29 A | 2016-11-30 A |  | 100% |  | 2016-11-29 | 2016-11-30 | 2d |  |  |  | 16h | 16h | 160 | 160 | 160 |
| 84 | 2.3.9.1 | Diseñar logotipo | 2d | 2016-11-29 A | 2016-11-30 A | 78 | 100% |  | 2016-11-29 | 2016-11-30 | 2d |  |  | Alberto | 16h | 16h | 160 | 160 | 160 |
| 85 | 2.3.10 | [NM] Contextualizar modelo de datos | 2d | 2016-11-25 A | 2016-11-26 A | 82 | 100% |  | 2016-11-25 | 2016-11-26 | 2d |  | start no earlier than 2016-10-20 | Pablo | 16h | 16h | 160 | 160 | 160 |
| 86 | 2.4 | **Iteración 4** | 10d | 2016-12-01 A | 2016-12-14 A | 71 | 100% |  | 2016-12-01 | 2016-12-14 | 10d |  |  |  | 216h | 216h | 2,160 | 2,160 | 2,160 |
| 87 | 2.4.1 | [SMBI] Validar funcionamiento | 1d | 2016-12-03 A | 2016-12-03 A | 92 | 100% |  | 2016-12-03 | 2016-12-03 | 1d |  |  | Sergio | 8h | 8h | 80 | 80 | 80 |
| 88 | 2.4.2 | [SMBI] Realizar informes | 1d | 2016-12-04 A | 2016-12-04 A | 87 | 100% |  | 2016-12-04 | 2016-12-04 | 1d |  |  | Alberto; Fernando; Juan; Pablo; Samuel; Sergio | 48h | 48h | 480 | 480 | 480 |
| 89 | 2.4.3 | [PM] Confeccionar informe iteración | 1d | 2016-12-14 A | 2016-12-14 A | 93 | 100% |  | 2016-12-14 | 2016-12-14 | 1d |  |  | Fernando | 8h | 8h | 80 | 80 | 80 |
| 90 | 2.4.4 | [SDM] Integrar API's redes sociales | 3d | 2016-12-05 A | 2016-12-07 A | 88 | 100% |  | 2016-12-05 | 2016-12-07 | 3d |  |  | Pablo | 24h | 24h | 240 | 240 | 240 |
| 91 | 2.4.5 | [NM] Definir métricas | 3d | 2016-12-08 A | 2016-12-10 A | 90 | 100% |  | 2016-12-08 | 2016-12-10 | 3d |  |  | Samuel; Alberto | 48h | 48h | 480 | 480 | 480 |
| 92 | 2.4.6 | [SMBI] Desplegar infraestructura del proyecto | 2d | 2016-12-01 A | 2016-12-02 A |  | 100% |  | 2016-12-01 | 2016-12-02 | 2d |  |  | Juan; Sergio | 32h | 32h | 320 | 320 | 320 |
| 93 | 2.4.7 | [PM] Aplicar modelo EVA | 3d | 2016-12-11 A | 2016-12-13 A | 91 | 100% |  | 2016-12-11 | 2016-12-13 | 3d |  |  | Pablo; Samuel | 48h | 48h | 480 | 480 | 480 |
| 94 | 2.5 | **Iteración 5** | 7d? | 2016-12-15 A | 2016-12-23 | 86 | 87% | 0.93d? | 2016-12-15 | 2016-12-23 | 7d? | 0d |  |  | 296h | 264h | 2,960 | 3,200 | 2,640 |
| 95 | 2.5.1 | **[PD] Realizar animación logo** | 2d | 2016-12-15 A | 2016-12-18 |  | 75% | 0.5d | 2016-12-15 | 2016-12-19 | 3d | 5d |  |  | 96h | 72h | 960 | 1,200 | 720 |
| 96 | 2.5.1.1 | Presentar animación logo | 4d | 2016-12-15 A | 2016-12-18 |  | 75% | 1d | 2016-12-15 | 2016-12-19 | 5d | 5d |  | Alberto; Fernando; Juan | 96h | 72h | 960 | 1,200 | 720 |
| 97 | 2.5.2 | [SMBI] Validar funcionamiento | 1d | 2016-12-15 A | 2016-12-15 A |  | 100% |  | 2016-12-15 | 2016-12-15 | 1d |  |  | Pablo; Samuel; Sergio | 24h | 24h | 240 | 240 | 240 |
| 98 | 2.5.3 | [SMBI] Realizar informes | 1d | 2016-12-16 A | 2016-12-16 A | 97 | 100% |  | 2016-12-16 | 2016-12-16 | 1d |  |  | Pablo; Samuel; Sergio | 24h | 24h | 240 | 240 | 240 |
| 99 | 2.5.4 | [SMBI] Entregar documentos de pruebas | 1d | 2016-12-17 | 2016-12-17 | 98 |  |  | 2016-12-17 | 2016-12-17 | 1d | 4d |  | Samuel | 8h |  | 80 | 80 |  |
| 100 | 2.5.5 | [PM] Confeccionar informe iteración | 1d | 2016-12-19 A | 2016-12-19 A | 95 | 100% |  | 2016-12-20 | 2016-12-20 | 1d |  |  | Fernando | 8h | 8h | 80 | 80 | 80 |
| 101 | 2.5.6 | [SDM] Corregir errores | 2d | 2016-12-17 A | 2016-12-18 A | 98 | 100% |  | 2016-12-17 | 2016-12-18 | 2d |  |  | Pablo | 16h | 16h | 160 | 160 | 160 |
| 102 | 2.5.7 | [SDM] Crear documento pruebas | 1d | 2016-12-19 A | 2016-12-19 A | 101 | 100% |  | 2016-12-19 | 2016-12-19 | 1d |  |  | Pablo | 8h | 8h | 80 | 80 | 80 |
| 103 | 2.5.8 | [SDM] Validar funcionamiento sistema | 1d? | 2016-12-20 A | 2016-12-20 A | 102 | 100% |  | 2016-12-20 | 2016-12-20 | 1d? |  |  | Alberto | 8h | 8h | 80 | 80 | 80 |
| 104 | 2.5.9 | [SDM] Realizar informe seguimiento | 1d | 2016-12-21 A | 2016-12-21 A | 103 | 100% |  | 2016-12-21 | 2016-12-21 | 1d |  |  | Juan | 8h | 8h | 80 | 80 | 80 |
| 105 | 2.5.10 | [PM] Elaborar presentación | 1d | 2016-12-22 A | 2016-12-22 A | 104 | 100% |  | 2016-12-22 | 2016-12-22 | 1d |  |  | Alberto; Fernando; Juan; Pablo; Samuel; Sergio | 48h | 48h | 480 | 480 | 480 |
| 106 | 2.5.11 | [PM]Exponer presentación | 1d | 2016-12-23 A | 2016-12-23 A | 105 | 100% |  | 2016-12-23 | 2016-12-23 | 1d |  |  | Alberto; Fernando; Juan; Pablo; Samuel; Sergio | 48h | 48h | 480 | 480 | 480 |

| ID | WBS | Task | Type | Duration | Start | Finish | Predecessors | Baseline start | Baseline finish | Baseline duration | Total slack |
| --- | --- | --- | --- | --- | --- | --- | --- | --- | --- | --- | --- |
| 107 | 3 | **HITO 2** |  | 26d | 2016-12-23 | 2017-01-30 | 37 | 2016-12-23 | 2017-01-30 | 26d |  |
| 108 | 3.1 | **Proyectos Multimedia** |  | 1d? | 2016-12-23 | 2016-12-26 |  | 2016-12-23 | 2016-12-26 | 1d? | 0d |
| 109 | 3.1.1 | Revisar especificación | manual | 1d? | 2016-12-23 | 2016-12-26 |  | 2016-12-23 | 2016-12-26 | 1d? |  |
| 110 | 3.1.2 | Reestimar proyecto | manual | 1d? | 2016-12-23 | 2016-12-26 |  | 2016-12-23 | 2016-12-26 | 1d? |  |
| 111 | 3.1.3 | [PM] Crear subtareas Project ENE. | manual | 1d? | 2016-12-23 | 2016-12-26 |  | 2016-12-23 | 2016-12-26 | 1d? |  |
| 112 | 3.1.4 | [PM] Asignar recursos Project ENE. | manual | 1d? | 2016-12-23 | 2016-12-26 |  | 2016-12-23 | 2016-12-26 | 1d? |  |
| 113 | 3.1.5 | Registrar tiempos Project | manual | 1d? | 2016-12-23 | 2016-12-26 |  | 2016-12-23 | 2016-12-26 | 1d? |  |
| 114 | 3.1.6 | Comparar planificación con la real | manual | 1d? | 2016-12-23 | 2016-12-26 |  | 2016-12-23 | 2016-12-26 | 1d? |  |
| 115 | 3.1.7 | Confeccionar informe iteración | manual | 1d? | 2016-12-23 | 2016-12-26 |  | 2016-12-23 | 2016-12-26 | 1d? |  |
| 116 | 3.2 | **Técnicas Avanzadas Gráficos** |  | 1d? | 2016-12-23 | 2016-12-26 |  | 2016-12-23 | 2016-12-26 | 1d? | 0d |
| 117 | 3.2.1 | Crear visualizador por fichero | manual | 1d? | 2016-12-23 | 2016-12-26 |  | 2016-12-23 | 2016-12-26 | 1d? |  |
| 118 | 3.3 | **Servicios Multimedia Avanzados** |  | 1d? | 2016-12-23 | 2016-12-26 |  | 2016-12-23 | 2016-12-26 | 1d? | 0d |
| 119 | 3.3.1 | Integrar Front-Back | manual | 1d? | 2016-12-23 | 2016-12-26 |  | 2016-12-23 | 2016-12-26 | 1d? |  |
| 120 | 3.3.2 | Hacer guia de estilos | manual | 1d? | 2016-12-23 | 2016-12-26 |  | 2016-12-23 | 2016-12-26 | 1d? |  |
| 121 | 3.3.3 | Realizar arqui. Tecnológica | manual | 1d? | 2016-12-23 | 2016-12-26 |  | 2016-12-23 | 2016-12-26 | 1d? |  |
| 122 | 3.3.4 | Realizar documento SEO | manual | 1d? | 2016-12-23 | 2016-12-26 |  | 2016-12-23 | 2016-12-26 | 1d? |  |
| 123 | 3.3.5 | Realizar informe seguimiento | manual | 1d? | 2016-12-23 | 2016-12-26 |  | 2016-12-23 | 2016-12-26 | 1d? |  |
| 124 | 3.4 | **Negocio Multimedia** |  | 1d? | 2016-12-23 | 2016-12-26 |  | 2016-12-23 | 2016-12-26 | 1d? | 0d |
| 125 | 3.4.1 | Incorporar API's open data | manual | 1d? | 2016-12-23 | 2016-12-26 |  | 2016-12-23 | 2016-12-26 | 1d? |  |
| 126 | 3.4.2 | Modelar integración datos | manual | 1d? | 2016-12-23 | 2016-12-26 |  | 2016-12-23 | 2016-12-26 | 1d? |  |
| 127 | 3.4.3 | Realizar informe seguimiento | manual | 1d? | 2016-12-23 | 2016-12-26 |  | 2016-12-23 | 2016-12-26 | 1d? |  |
| 128 | 3.5 | **Postproducción Digital** |  | 1d? | 2016-12-23 | 2016-12-26 |  | 2016-12-23 | 2016-12-26 | 1d? | 0d |
| 129 | 3.5.1 | Realizar cartel proyecto | manual | 1d? | 2016-12-23 | 2016-12-26 |  | 2016-12-23 | 2016-12-26 | 1d? |  |
| 131 | 4 | **HITO 3** |  | 47d | 2017-01-30 | 2017-04-05 | 107 | 2017-01-30 | 2017-04-05 | 47d |  |
| 132 | 4.1 | **Postproducción digital** |  | 1d? | 2017-01-30 | 2017-01-31 |  | 2017-01-30 | 2017-01-31 | 1d? | 0d |
| 133 | 4.1.1 | Realizar video proyecto | manual | 1d? | 2017-01-30 | 2017-01-31 |  | 2017-01-30 | 2017-01-31 | 1d? |  |

| ID | WBS | Task | Type | Duration | Start | Finish | Baseline start | Baseline finish | Baseline duration | Total slack |
| --- | --- | --- | --- | --- | --- | --- | --- | --- | --- | --- |
| 134 | 4.2 | **Técnicas Avanzadas de Gráficos** |  | 1d? | 2017-01-31 | 2017-01-31 | 2017-01-31 | 2017-01-31 | 1d? | 0d |
| 135 | 4.2.1 | Crear arb.escena |  | 1d | 2017-01-31 | 2017-01-31 | 2017-01-31 | 2017-01-31 | 1d | 46d |
| 136 | 4.2.2 | Hacer arb.escena transformaciones |  | 1d | 2017-01-31 | 2017-01-31 | 2017-01-31 | 2017-01-31 | 1d | 46d |
| 137 | 4.2.3 | Hacer arb.escena cámara luz |  | 1d | 2017-01-31 | 2017-01-31 | 2017-01-31 | 2017-01-31 | 1d | 46d |
| 138 | 4.2.4 | Hacer arb.escena mayas | manual | 1d? | 2017-01-31 | 2017-01-31 | 2017-01-31 | 2017-01-31 | 1d? |  |
| 139 | 4.2.5 | Hacer arb.escena animación | manual | 1d? | 2017-01-31 | 2017-01-31 | 2017-01-31 | 2017-01-31 | 1d? |  |
| 140 | 4.2.6 | Cargar modelos | manual | 1d? | 2017-01-31 | 2017-01-31 | 2017-01-31 | 2017-01-31 | 1d? |  |
| 141 | 4.2.7 | Integrar motor | manual | 1d? | 2017-01-31 | 2017-01-31 | 2017-01-31 | 2017-01-31 | 1d? |  |
| 142 | 4.2.8 | Visualizar con camaras y luces | manual | 1d? | 2017-01-31 | 2017-01-31 | 2017-01-31 | 2017-01-31 | 1d? |  |
| 143 | 4.2.9 | Cargar materiales y texturas | manual | 1d? | 2017-01-31 | 2017-01-31 | 2017-01-31 | 2017-01-31 | 1d? |  |
| 144 | 4.2.10 | Visualizar malla | manual | 1d? | 2017-01-31 | 2017-01-31 | 2017-01-31 | 2017-01-31 | 1d? |  |
| 145 | 4.2.11 | Crear fachada | manual | 1d? | 2017-01-31 | 2017-01-31 | 2017-01-31 | 2017-01-31 | 1d? |  |
| 146 | 4.2.12 | Visualizar con un shader | manual | 1d? | 2017-01-31 | 2017-01-31 | 2017-01-31 | 2017-01-31 | 1d? |  |
| 147 | 4.3 | **Proyectos Multimedia** |  | 1d? | 2017-01-30 | 2017-01-31 | 2017-01-30 | 2017-01-31 | 1d? | 0d |
| 148 | 4.3.1 | [PM] Crear subtareas Project FEB.-MAR. | manual | 1d? | 2017-01-30 | 2017-01-31 | 2017-01-30 | 2017-01-31 | 1d? |  |
| 149 | 4.3.2 | [PM] Asignar recursos Project FEB.-MAR. | manual | 1d? | 2017-01-30 | 2017-01-31 | 2017-01-30 | 2017-01-31 | 1d? |  |
| 150 | 4.3.3 | Registrar tiempos Project | manual | 1d? | 2017-01-30 | 2017-01-31 | 2017-01-30 | 2017-01-31 | 1d? |  |
| 151 | 4.3.4 | Comparar planificación con la real | manual | 1d? | 2017-01-30 | 2017-01-31 | 2017-01-30 | 2017-01-31 | 1d? |  |
| 152 | 4.3.5 | Confeccionar informe iteración | manual | 1d? | 2017-01-30 | 2017-01-31 | 2017-01-30 | 2017-01-31 | 1d? |  |
| 153 | 4.3.6 | Elaborar presentación | manual | 1d? | 2017-01-30 | 2017-01-31 | 2017-01-30 | 2017-01-31 | 1d? |  |
| 154 | 4.3.7 | Exponer presentación | manual | 1d? | 2017-01-30 | 2017-01-31 | 2017-01-30 | 2017-01-31 | 1d? |  |
| 155 | 4.4 | **Servicios Multimedia Avanzados** |  | 1d? | 2017-01-30 | 2017-01-31 | 2017-01-30 | 2017-01-31 | 1d? | 0d |
| 156 | 4.4.1 | Implementar Front-end 80% | manual | 1d? | 2017-01-30 | 2017-01-31 | 2017-01-30 | 2017-01-31 | 1d? |  |
| 157 | 4.4.2 | Realizar informe seguimiento | manual | 1d? | 2017-01-30 | 2017-01-31 | 2017-01-30 | 2017-01-31 | 1d? |  |

Notes:
- 135: Tipo de datos, entidades, construcción, recorrido y salida.
- 144: Añadiendo materiales y texturas.

| ID | WBS | Task | Type | Duration | Start | Finish | Predecessors | Baseline start | Baseline finish | Baseline duration | Total slack |
| --- | --- | --- | --- | --- | --- | --- | --- | --- | --- | --- | --- |
| 158 | 4.5 | **Negocio Multimedia** |  | 1d? | 2017-01-30 | 2017-01-31 |  | 2017-01-30 | 2017-01-31 | 1d? | 0d |
| 159 | 4.5.1 | Desplegar infraestructura | manual | 1d? | 2017-01-30 | 2017-01-31 |  | 2017-01-30 | 2017-01-31 | 1d? |  |
| 160 | 4.5.2 | Valorar cuadros de mando y KPI's | manual | 1d? | 2017-01-30 | 2017-01-31 |  | 2017-01-30 | 2017-01-31 | 1d? |  |
| 161 | 4.5.3 | Realizar informes seguimiento | manual | 1d? | 2017-01-30 | 2017-01-31 |  | 2017-01-30 | 2017-01-31 | 1d? |  |
| 164 | 5 | **HITO 4** |  | 37d | 2017-04-05 | 2017-05-26 | 131 | 2017-04-05 | 2017-05-26 | 37d |  |
| 165 | 5.1 | **Postproducción digital** |  | 1d? | 2017-04-05 | 2017-04-06 |  | 2017-04-05 | 2017-04-06 | 1d? | 0d |
| 166 | 5.1.1 | Realizar Making of proyecto | manual | 1d? | 2017-04-05 | 2017-04-06 |  | 2017-04-05 | 2017-04-06 | 1d? |  |
| 167 | 5.1.2 | Realizar créditos proyecto | manual | 1d? | 2017-04-05 | 2017-04-06 |  | 2017-04-05 | 2017-04-06 | 1d? |  |
| 168 | 5.2 | **Técnicas Avanzadas de Gráficos** |  | 1d? | 2017-04-05 | 2017-04-06 |  | 2017-04-05 | 2017-04-06 | 1d? | 0d |
| 169 | 5.2.1 | Cargar modelos | manual | 1d? | 2017-04-05 | 2017-04-06 |  | 2017-04-05 | 2017-04-06 | 1d? |  |
| 170 | 5.2.2 | Optimizar motor | manual | 1d? | 2017-04-05 | 2017-04-06 |  | 2017-04-05 | 2017-04-06 | 1d? |  |
| 171 | 5.2.3 | Crear efectos visuales | manual | 1d? | 2017-04-05 | 2017-04-06 |  | 2017-04-05 | 2017-04-06 | 1d? |  |
| 172 | 5.2.4 | Realizar extras | manual | 1d? | 2017-04-05 | 2017-04-06 |  | 2017-04-05 | 2017-04-06 | 1d? |  |
| 173 | 5.3 | **Proyectos Multimedia** |  | 1d? | 2017-04-05 | 2017-04-06 |  | 2017-04-05 | 2017-04-06 | 1d? | 0d |
| 174 | 5.3.1 | [PM] Crear subtareas Project ABR.-MAY. | manual | 1d? | 2017-04-05 | 2017-04-06 |  | 2017-04-05 | 2017-04-06 | 1d? |  |
| 175 | 5.3.2 | [PM] Asignar recursos Project ABR.-MAY. | manual | 1d? | 2017-04-05 | 2017-04-06 |  | 2017-04-05 | 2017-04-06 | 1d? |  |
| 176 | 5.3.3 | Registrar tiempos Project | manual | 1d? | 2017-04-05 | 2017-04-06 |  | 2017-04-05 | 2017-04-06 | 1d? |  |
| 177 | 5.3.4 | Comparar planificación con la real | manual | 1d? | 2017-04-05 | 2017-04-06 |  | 2017-04-05 | 2017-04-06 | 1d? |  |
| 178 | 5.3.5 | Confeccionar informe iteración | manual | 1d? | 2017-04-05 | 2017-04-06 |  | 2017-04-05 | 2017-04-06 | 1d? |  |
| 179 | 5.3.6 | Elaborar presentación | manual | 1d? | 2017-04-05 | 2017-04-06 |  | 2017-04-05 | 2017-04-06 | 1d? |  |
| 180 | 5.3.7 | Exponer presentación | manual | 1d? | 2017-04-05 | 2017-04-06 |  | 2017-04-05 | 2017-04-06 | 1d? |  |
| 181 | 5.4 | **Servicios Multimedia Avanzados** |  | 1d? | 2017-04-05 | 2017-04-06 |  | 2017-04-05 | 2017-04-06 | 1d? | 0d |
| 182 | 5.4.1 | Implementar Front-end 20% | manual | 1d? | 2017-04-05 | 2017-04-06 |  | 2017-04-05 | 2017-04-06 | 1d? |  |
| 183 | 5.4.2 | Realizar doc. Pruebas | manual | 1d? | 2017-04-05 | 2017-04-06 |  | 2017-04-05 | 2017-04-06 | 1d? |  |
| 184 | 5.4.3 | Validar funcionalidades | manual | 1d? | 2017-04-05 | 2017-04-06 |  | 2017-04-05 | 2017-04-06 | 1d? |  |
| 185 | 5.4.4 | Realizar informe seguimiento | manual | 1d? | 2017-04-05 | 2017-04-06 |  | 2017-04-05 | 2017-04-06 | 1d? |  |

| ID | WBS | Task | Type | Duration | Start | Finish | Baseline start | Baseline finish | Baseline duration | Total slack |
| --- | --- | --- | --- | --- | --- | --- | --- | --- | --- | --- |
| 186 | 5.5 | **Negocio Multimedia** |  | 1d? | 2017-04-05 | 2017-04-06 | 2017-04-05 | 2017-04-06 | 1d? | 0d |
| 187 | 5.5.1 | Validar funcionamiento | manual | 1d? | 2017-04-05 | 2017-04-06 | 2017-04-05 | 2017-04-06 | 1d? |  |
| 188 | 5.5.2 | Realizar informe presencial | manual | 1d? | 2017-04-05 | 2017-04-06 | 2017-04-05 | 2017-04-06 | 1d? |  |
